# Samarina

Schedule from MS Project XML, 2016-08-30 to 2016-12-12, costs in $, A marks actual dates.

## Calendars

- Standard: Mon-Fri 08:00-12:00, 13:00-17:00; Sat-Sun off.

## Resources

| Resource |
| --- |
| Gerente de Projeto |
| Desenvolvedor 1 |
| Analista de Sistemas 1 |
| Designer |
| Arquiteto de Sistema |
| Analista de Testes |
| Testador |
| Analista de Implantação |
| Diretor do Salão |
| Desenvolvedor 2 |
| Analista de Sistemas 2 |
| Fornecedor de Requisito 1 |
| Fornecedor de Requisito 2 |
| Auditor |
| Supervisor de Qualidade |

## Schedule

| ID | WBS | Task | Type | Duration | Start | Finish | Predecessors | Remaining | Baseline 1 start | Baseline 1 finish | Total slack | Resources | Work | Cost |
| --- | --- | --- | --- | --- | --- | --- | --- | --- | --- | --- | --- | --- | --- | --- |
| 1 | 1 | **Salão Samarina** |  | 74d? | 2016-08-30 08:00 A | 2016-12-12 08:00 |  | 74d? | 2016-08-30 08:00 | 2016-09-29 09:19 | 0d |  | 1031.97h | 266.24 |
| 2 | 1.1 | **Fase de Planejamento** |  | 10.62d | 2016-08-30 08:00 A | 2016-09-13 14:00 |  | 10.62d | 2016-08-30 08:00 | 2016-09-07 17:00 | 0d |  | 83h | 37.44 |
| 3 | 1.1.1 | **Gerenciamento do Escopo** |  | 2d | 2016-08-30 08:00 A | 2016-08-31 17:00 |  | 2d | 2016-08-30 08:00 | 2016-09-02 17:00 | 0d |  | 24h | 9.48 |
| 4 | 1.1.1.1 | Reunião de Levantamento de Requisitos |  | 2h | 2016-08-30 08:00 A | 2016-08-30 10:00 |  | 2h | 2016-08-30 08:00 | 2016-08-30 10:00 | 0d | Gerente de Projeto; Analista de Sistemas 1; Fornecedor de Requisito 1; Fornecedor de Requisito 2; Analista de Sistemas 2 | 10h | 2.76 |
| 5 | 1.1.1.2 | Declaração do Escopo |  | 4h | 2016-08-30 10:00 A | 2016-08-30 15:00 | 4 | 4h | 2016-08-30 10:00 | 2016-08-30 15:00 | 0d | Gerente de Projeto | 4h | 1.92 |
| 6 | 1.1.1.3 | Termo de Abertura do Projeto |  | 4h | 2016-08-30 15:00 A | 2016-08-31 10:00 | 5 | 4h | 2016-08-30 15:00 | 2016-08-31 10:00 | 0d | Gerente de Projeto | 4h | 1.92 |
| 7 | 1.1.1.4 | EAP do Projeto |  | 6h | 2016-08-31 10:00 A | 2016-08-31 17:00 | 6 | 6h | 2016-09-01 08:00 | 2016-09-02 17:00 | 0d | Gerente de Projeto | 6h | 2.88 |
| 8 | 1.1.2 | Reunião para Definir Plano de Comunicação |  | 1h | 2016-09-01 08:00 A | 2016-09-01 09:00 | 7 | 1h | 2016-09-05 08:00 | 2016-09-05 09:00 | 0d | Gerente de Projeto; Desenvolvedor 2; Fornecedor de Requisito 1 | 3h | 1.08 |
| 9 | 1.1.3 | Elaboração do Cronograma |  | 8h | 2016-09-01 09:00 A | 2016-09-02 09:00 | 8 | 8h | 2016-09-05 08:00 | 2016-09-05 17:00 | 0d | Gerente de Projeto | 8h | 3.84 |
| 10 | 1.1.4 | **Elaboração do Plano de Projeto** |  | 7.5d | 2016-09-02 09:00 A | 2016-09-13 14:00 | 9 | 7.5d | 2016-08-31 10:00 | 2016-09-07 17:00 | 0d |  | 48h | 23.04 |
| 11 | 1.1.4.1 | Gerenciamento da Comunicação |  | 16h | 2016-09-02 09:00 A | 2016-09-06 09:00 |  | 16h | 2016-09-06 08:00 | 2016-09-07 17:00 | 0d | Gerente de Projeto | 4h | 1.92 |
| 12 | 1.1.4.2 | Gerenciamento de Recursos |  | 4h | 2016-09-06 09:00 A | 2016-09-06 14:00 | 11 | 4h | 2016-08-31 10:00 | 2016-08-31 15:00 | 0d | Gerente de Projeto | 4h | 1.92 |
| 13 | 1.1.4.3 | Gerenciamento de Tempo |  | 12h | 2016-09-06 14:00 A | 2016-09-08 09:00 | 12 | 12h | 2016-09-06 08:00 | 2016-09-07 12:00 | 0d | Gerente de Projeto | 12h | 5.76 |
| 14 | 1.1.4.4 | Gerenciamento de Custos |  | 12h | 2016-09-08 09:00 A | 2016-09-09 14:00 | 13 | 12h | 2016-08-31 10:00 | 2016-09-01 15:00 | 0d | Gerente de Projeto | 12h | 5.76 |
| 15 | 1.1.4.5 | Gerenciamento da Qualidade |  | 10h | 2016-09-09 14:00 A | 2016-09-12 16:00 | 14 | 10h | 2016-09-05 08:00 | 2016-09-06 10:00 | 0d | Gerente de Projeto | 10h | 4.8 |
| 16 | 1.1.4.6 | Gerenciamento de Riscos |  | 6h | 2016-09-12 16:00 A | 2016-09-13 14:00 | 15 | 6h | 2016-09-06 08:00 | 2016-09-06 15:00 | 0d | Gerente de Projeto | 6h | 2.88 |
| 17 | 1.1.5 | Atividades de Monitoramento e Controle |  | 0h | 2016-09-13 14:00 A | 2016-09-13 14:00 | 3SS, 16FF | 0h |  |  | 0d | Gerente de Projeto |  |  |
| 18 | 1.1.6 | Marco M1 | milestone | 0h | 2016-09-13 14:00 A | 2016-09-13 14:00 | 16 | 0h | 2016-09-06 15:00 | 2016-09-06 15:00 | 0d |  |  |  |
| 19 | 1.2 | **Fase Inicial** |  | 25.62d | 2016-09-13 14:00 A | 2016-10-19 10:00 | 18 | 25.62d | 2016-09-06 15:00 | 2016-09-27 14:00 | 0d |  | 251h | 75.7 |
| 20 | 1.2.1 | Reunião de Kick-Off com Equipe do Projeto |  | 2h | 2016-09-13 14:00 A | 2016-09-13 16:00 | 16 | 2h | 2016-09-06 15:00 | 2016-09-06 17:00 | 0d | Gerente de Projeto; Desenvolvedor 1; Analista de Sistemas 1; Designer; Arquiteto de Sistema; Analista de Testes; Testador; Analista de Implantação; Desenvolvedor 2; Analista de Sistemas 2 | 20h | 5.47 |
| 21 | 1.2.2 | **Engenharia de Requisitos** |  | 24.38d | 2016-09-13 16:00 A | 2016-10-18 10:00 | 20 | 24.38d | 2016-09-07 08:00 | 2016-09-26 17:00 | 0d |  | 218h | 65.16 |
| 22 | 1.2.2.1 | **Etapa I** |  | 16.5d | 2016-09-13 16:00 A | 2016-10-06 11:00 | 20 | 16.5d | 2016-09-07 08:00 | 2016-09-26 17:00 | 0d |  | 135h | 40.38 |
| 23 | 1.2.2.1.1 | **Análise** |  | 8.5d | 2016-09-13 16:00 A | 2016-09-26 11:00 |  | 8.5d | 2016-09-07 08:00 | 2016-09-23 17:00 | 0d |  | 68h | 20.4 |
| 24 | 1.2.2.1.1.1 | RF 1 - Cadastrar Pedido |  | 5h | 2016-09-13 16:00 A | 2016-09-14 12:00 | 20 | 5h | 2016-09-07 08:00 | 2016-09-07 17:00 | 0d | Analista de Sistemas 1 | 5h | 1.5 |
| 25 | 1.2.2.1.1.2 | RF 2 - Cadastrar Serviço |  | 8h | 2016-09-14 13:00 A | 2016-09-15 12:00 | 24 | 8h | 2016-09-08 08:00 | 2016-09-08 17:00 | 0d | Analista de Sistemas 1 | 8h | 2.4 |
| 26 | 1.2.2.1.1.3 | RF 3 - Alterar Serviço |  | 8h | 2016-09-15 13:00 A | 2016-09-16 12:00 | 25 | 8h | 2016-09-09 08:00 | 2016-09-09 17:00 | 0d | Analista de Sistemas 1 | 8h | 2.4 |
| 27 | 1.2.2.1.1.4 | RF 4 - Alterar Pedido |  | 5h | 2016-09-16 13:00 A | 2016-09-19 09:00 | 26 | 5h | 2016-09-12 08:00 | 2016-09-12 17:00 | 0d | Analista de Sistemas 1 | 5h | 1.5 |
| 28 | 1.2.2.1.1.5 | RF 5 - Excluir Serviço |  | 8h | 2016-09-19 09:00 A | 2016-09-20 09:00 | 27 | 8h | 2016-09-13 08:00 | 2016-09-13 17:00 | 0d | Analista de Sistemas 1 | 8h | 2.4 |
| 29 | 1.2.2.1.1.6 | RF 6 - Excluir Pedido |  | 5h | 2016-09-20 09:00 A | 2016-09-20 15:00 | 28 | 5h | 2016-09-14 08:00 | 2016-09-14 17:00 | 0d | Analista de Sistemas 1 | 5h | 1.5 |
| 30 | 1.2.2.1.1.7 | RF 7 - Cadastrar Cliente |  | 3h | 2016-09-20 15:00 A | 2016-09-21 09:00 | 29 | 3h | 2016-09-15 08:00 | 2016-09-15 17:00 | 0d | Analista de Sistemas 1 | 3h | 0.9 |
| 31 | 1.2.2.1.1.8 | RF 8 - Alterar Cliente |  | 3h | 2016-09-21 09:00 A | 2016-09-21 12:00 | 30 | 3h | 2016-09-16 08:00 | 2016-09-16 17:00 | 0d | Analista de Sistemas 1 | 3h | 0.9 |
| 32 | 1.2.2.1.1.9 | RF 9 - Excluir Cliente |  | 3h | 2016-09-21 13:00 A | 2016-09-21 16:00 | 31 | 3h | 2016-09-19 08:00 | 2016-09-19 17:00 | 0d | Analista de Sistemas 1 | 3h | 0.9 |
| 33 | 1.2.2.1.1.10 | RF 10 - Consultar Pedido |  | 5h | 2016-09-21 16:00 A | 2016-09-22 12:00 | 32 | 5h | 2016-09-20 08:00 | 2016-09-20 17:00 | 0d | Analista de Sistemas 1 | 5h | 1.5 |
| 34 | 1.2.2.1.1.11 | RF 11 - Consultar Horário |  | 5h | 2016-09-22 13:00 A | 2016-09-23 09:00 | 33 | 5h | 2016-09-21 08:00 | 2016-09-21 17:00 | 0d | Analista de Sistemas 1 | 5h | 1.5 |
| 35 | 1.2.2.1.1.12 | RF 12 - Login Funcionário |  | 5h | 2016-09-23 09:00 A | 2016-09-23 15:00 | 34 | 5h | 2016-09-22 08:00 | 2016-09-22 17:00 | 0d | Analista de Sistemas 1 | 5h | 1.5 |
| 36 | 1.2.2.1.1.13 | RF 13 - Logout Funcionário |  | 5h | 2016-09-23 15:00 A | 2016-09-26 11:00 | 35 | 5h | 2016-09-23 08:00 | 2016-09-23 17:00 | 0d | Analista de Sistemas 1 | 5h | 1.5 |

| ID | WBS | Task | Duration | Start | Finish | Predecessors | Remaining | Baseline 1 start | Baseline 1 finish | Total slack | Resources | Work | Cost |
| --- | --- | --- | --- | --- | --- | --- | --- | --- | --- | --- | --- | --- | --- |
| 37 | 1.2.2.1.2 | **Validação** | 8d | 2016-09-26 11:00 A | 2016-10-06 11:00 | 36 | 8d | 2016-09-08 08:00 | 2016-09-26 17:00 | 0d |  | 67h | 19.98 |
| 38 | 1.2.2.1.2.1 | RF 1 - Cadastrar Pedido | 5h | 2016-09-26 11:00 A | 2016-09-26 17:00 | 24 | 5h | 2016-09-08 08:00 | 2016-09-08 17:00 | 0d | Analista de Sistemas 2 | 5h | 1.5 |
| 39 | 1.2.2.1.2.2 | RF 2 - Cadastrar Serviço | 8h | 2016-09-26 14:00 A | 2016-09-27 14:00 | 25 | 8h | 2016-09-09 08:00 | 2016-09-09 17:00 | 0d | Analista de Sistemas 2 | 8h | 2.4 |
| 40 | 1.2.2.1.2.3 | RF 3 - Alterar Serviço | 8h | 2016-09-27 14:00 A | 2016-09-28 14:00 | 26 | 8h | 2016-09-12 08:00 | 2016-09-12 17:00 | 0d | Analista de Sistemas 2 | 8h | 2.4 |
| 41 | 1.2.2.1.2.4 | RF 4 - Alterar Pedido | 5h | 2016-09-29 08:00 A | 2016-09-29 14:00 | 40 | 5h | 2016-09-13 08:00 | 2016-09-13 17:00 | 0d | Analista de Sistemas 2 | 5h | 1.5 |
| 42 | 1.2.2.1.2.5 | RF 5 - Excluir Serviço | 8h | 2016-09-29 14:00 A | 2016-09-30 14:00 | 41 | 8h | 2016-09-14 08:00 | 2016-09-14 17:00 | 0d | Analista de Sistemas 2 | 8h | 2.4 |
| 43 | 1.2.2.1.2.6 | RF 6 - Excluir Pedido | 5h | 2016-09-30 14:00 A | 2016-10-03 10:00 | 42 | 5h | 2016-09-15 08:00 | 2016-09-15 17:00 | 0d | Analista de Sistemas 2 | 5h | 1.5 |
| 44 | 1.2.2.1.2.7 | RF 7 - Cadastrar Cliente | 2h | 2016-09-28 09:00 A | 2016-09-28 11:00 | 30 | 2h | 2016-09-16 08:00 | 2016-09-16 17:00 | 0d | Analista de Sistemas 2 | 2h | 0.6 |
| 45 | 1.2.2.1.2.8 | RF 8 - Alterar Cliente | 2h | 2016-10-03 08:00 A | 2016-10-03 10:00 | 44 | 2h | 2016-09-19 08:00 | 2016-09-19 17:00 | 0d | Analista de Sistemas 2 | 2h | 0.6 |
| 46 | 1.2.2.1.2.9 | RF 9 - Excluir Cliente | 2h | 2016-10-05 10:00 A | 2016-10-05 12:00 | 45 | 2h | 2016-09-20 08:00 | 2016-09-20 17:00 | 0d | Analista de Sistemas 2 | 2h | 0.6 |
| 47 | 1.2.2.1.2.10 | RF 10 - Consultar Pedido | 5h | 2016-10-03 13:00 A | 2016-10-04 09:00 | 33 | 5h | 2016-09-21 08:00 | 2016-09-21 17:00 | 0d | Analista de Sistemas 2 | 5h | 1.5 |
| 48 | 1.2.2.1.2.11 | RF 11 - Consultar Horário | 5h | 2016-10-04 09:00 A | 2016-10-04 15:00 | 34 | 5h | 2016-09-22 08:00 | 2016-09-22 17:00 | 0d | Analista de Sistemas 2 | 5h | 1.5 |
| 49 | 1.2.2.1.2.12 | RF 12 - Login Funcionário | 5h | 2016-10-04 15:00 A | 2016-10-05 11:00 | 35 | 5h | 2016-09-23 08:00 | 2016-09-23 17:00 | 0d | Analista de Sistemas 2 | 5h | 1.5 |
| 50 | 1.2.2.1.2.13 | RF 13 - Logout Funcionário | 5h | 2016-10-05 14:00 A | 2016-10-06 10:00 | 36 | 5h | 2016-09-26 08:00 | 2016-09-26 17:00 | 0d | Analista de Sistemas 2 | 5h | 1.5 |
| 51 | 1.2.2.1.2.14 | Reunião para Acompanhamento do Desempenho | 1h | 2016-10-06 10:00 A | 2016-10-06 11:00 | 50 | 1h |  |  | 0d | Gerente de Projeto; Diretor do Salão | 2h | 0.48 |
| 52 | 1.2.2.2 | **Etapa II** | 8d | 2016-10-06 10:00 A | 2016-10-18 10:00 | 50 | 8d | 2016-09-07 08:00 | 2016-09-26 17:00 | 0d |  | 83h | 24.78 |
| 53 | 1.2.2.2.1 | **Análise** | 5.75d | 2016-10-06 10:00 A | 2016-10-13 17:00 | 50 | 5.75d | 2016-09-07 08:00 | 2016-09-23 17:00 | 0d |  | 46h | 13.8 |
| 54 | 1.2.2.2.1.1 | RF 14 - Cadastrar Usuário | 8h | 2016-10-06 10:00 A | 2016-10-07 10:00 | 20 | 8h | 2016-09-07 08:00 | 2016-09-07 17:00 | 0d | Analista de Sistemas 1 | 8h | 2.4 |
| 55 | 1.2.2.2.1.2 | RF 15 - Login Usuário | 3h | 2016-10-07 10:00 A | 2016-10-07 14:00 | 54 | 3h | 2016-09-08 08:00 | 2016-09-08 17:00 | 0d | Analista de Sistemas 1 | 3h | 0.9 |
| 56 | 1.2.2.2.1.3 | RF 16 - Logout Usuário | 3h | 2016-10-07 14:00 A | 2016-10-07 17:00 | 55 | 3h | 2016-09-09 08:00 | 2016-09-09 17:00 | 0d | Analista de Sistemas 1 | 3h | 0.9 |
| 57 | 1.2.2.2.1.4 | RF 17 - Realizar Pedido | 3h | 2016-10-10 08:00 A | 2016-10-10 11:00 | 56 | 3h | 2016-09-12 08:00 | 2016-09-12 17:00 | 0d | Analista de Sistemas 1 | 3h | 0.9 |
| 58 | 1.2.2.2.1.5 | RF 18 - Notificar Mudança de Status do Pedido | 3h | 2016-10-10 11:00 A | 2016-10-10 15:00 | 57 | 3h | 2016-09-13 08:00 | 2016-09-13 17:00 | 0d | Analista de Sistemas 1 | 3h | 0.9 |
| 59 | 1.2.2.2.1.6 | RF 19 - Cancelar Serviço | 3h | 2016-10-10 15:00 A | 2016-10-11 09:00 | 58 | 3h | 2016-09-14 08:00 | 2016-09-14 17:00 | 0d | Analista de Sistemas 1 | 3h | 0.9 |
| 60 | 1.2.2.2.1.7 | RF 20 - Excluir Conta | 5h | 2016-10-11 09:00 A | 2016-10-11 15:00 | 59 | 5h | 2016-09-15 08:00 | 2016-09-15 17:00 | 0d | Analista de Sistemas 2 | 5h | 1.5 |
| 61 | 1.2.2.2.1.8 | RF 21 - Editar Serviço | 3h | 2016-10-11 15:00 A | 2016-10-12 09:00 | 60 | 3h | 2016-09-16 08:00 | 2016-09-16 17:00 | 0d | Analista de Sistemas 2 | 3h | 0.9 |
| 62 | 1.2.2.2.1.9 | RF 22 - Alterar Pedido | 3h | 2016-10-12 09:00 A | 2016-10-12 12:00 | 61 | 3h | 2016-09-19 08:00 | 2016-09-19 17:00 | 0d | Analista de Sistemas 2 | 3h | 0.9 |
| 63 | 1.2.2.2.1.10 | RF 23 - Cancelar Pedido | 3h | 2016-10-12 13:00 A | 2016-10-12 16:00 | 62 | 3h | 2016-09-20 08:00 | 2016-09-20 17:00 | 0d | Analista de Sistemas 2 | 3h | 0.9 |
| 64 | 1.2.2.2.1.11 | RF 24 - Consultar Pedido | 3h | 2016-10-12 16:00 A | 2016-10-13 10:00 | 63 | 3h | 2016-09-21 08:00 | 2016-09-21 17:00 | 0d | Analista de Sistemas 2 | 3h | 0.9 |
| 65 | 1.2.2.2.1.12 | RF 25 - Avaliar Pedido | 3h | 2016-10-13 10:00 A | 2016-10-13 14:00 | 64 | 3h | 2016-09-22 08:00 | 2016-09-22 17:00 | 0d | Analista de Sistemas 2 | 3h | 0.9 |
| 66 | 1.2.2.2.1.13 | RF 26 - Visualizar Informações do Salão | 3h | 2016-10-13 14:00 A | 2016-10-13 17:00 | 65 | 3h | 2016-09-23 08:00 | 2016-09-23 17:00 | 0d | Analista de Sistemas 2 | 3h | 0.9 |

| ID | WBS | Task | Type | Duration | Start | Finish | Predecessors | Remaining | Baseline 1 start | Baseline 1 finish | Total slack | Resources | Work | Cost |
| --- | --- | --- | --- | --- | --- | --- | --- | --- | --- | --- | --- | --- | --- | --- |
| 67 | 1.2.2.2.2 | **Validação** |  | 2.25d | 2016-10-14 08:00 A | 2016-10-18 10:00 | 66 | 2.25d | 2016-09-08 08:00 | 2016-09-26 17:00 | 0d |  | 37h | 10.98 |
| 68 | 1.2.2.2.2.1 | RF 14 - Cadastrar Usuário |  | 8h | 2016-10-14 08:00 A | 2016-10-14 17:00 | 54 | 8h | 2016-09-08 08:00 | 2016-09-08 17:00 | 0d | Analista de Sistemas 2 | 8h | 2.4 |
| 69 | 1.2.2.2.2.2 | RF 15 - Login Usuário |  | 2h | 2016-10-17 08:00 A | 2016-10-17 10:00 | 55 | 2h | 2016-09-09 08:00 | 2016-09-09 17:00 | 0d | Analista de Sistemas 2 | 2h | 0.6 |
| 70 | 1.2.2.2.2.3 | RF 16 - Logout Usuário |  | 2h | 2016-10-17 10:00 A | 2016-10-17 12:00 | 56 | 2h | 2016-09-12 08:00 | 2016-09-12 17:00 | 0d | Analista de Sistemas 2 | 2h | 0.6 |
| 71 | 1.2.2.2.2.4 | RF 17 - Realizar Pedido |  | 2h | 2016-10-17 11:00 A | 2016-10-17 14:00 | 57 | 2h | 2016-09-13 08:00 | 2016-09-13 17:00 | 0d | Analista de Sistemas 2 | 2h | 0.6 |
| 72 | 1.2.2.2.2.5 | RF 18 - Notificar Mudança de Status do Pedido |  | 2h | 2016-10-17 15:00 A | 2016-10-17 17:00 | 58 | 2h | 2016-09-14 08:00 | 2016-09-14 17:00 | 0d | Analista de Sistemas 2 | 2h | 0.6 |
| 73 | 1.2.2.2.2.6 | RF 19 - Cancelar Serviço |  | 2h | 2016-10-18 08:00 A | 2016-10-18 10:00 | 59 | 2h | 2016-09-15 08:00 | 2016-09-15 17:00 | 0d | Analista de Sistemas 2 | 2h | 0.6 |
| 74 | 1.2.2.2.2.7 | RF 20 - Excluir Conta |  | 5h | 2016-10-14 08:00 A | 2016-10-14 14:00 | 60 | 5h | 2016-09-16 08:00 | 2016-09-16 17:00 | 0d | Analista de Sistemas 1 | 5h | 1.5 |
| 75 | 1.2.2.2.2.8 | RF 21 - Editar Serviço |  | 2h | 2016-10-14 08:00 A | 2016-10-14 10:00 | 61 | 2h | 2016-09-19 08:00 | 2016-09-19 17:00 | 0d | Analista de Sistemas 1 | 2h | 0.6 |
| 76 | 1.2.2.2.2.9 | RF 22 - Alterar Pedido |  | 2h | 2016-10-14 16:00 A | 2016-10-17 09:00 | 62 | 2h | 2016-09-20 08:00 | 2016-09-20 17:00 | 0d | Analista de Sistemas 1 | 2h | 0.6 |
| 77 | 1.2.2.2.2.10 | RF 23 - Cancelar Pedido |  | 2h | 2016-10-17 09:00 A | 2016-10-17 11:00 | 63 | 2h | 2016-09-21 08:00 | 2016-09-21 17:00 | 0d | Analista de Sistemas 1 | 2h | 0.6 |
| 78 | 1.2.2.2.2.11 | RF 24 - Consultar Pedido |  | 2h | 2016-10-17 11:00 A | 2016-10-17 14:00 | 64 | 2h | 2016-09-22 08:00 | 2016-09-22 17:00 | 0d | Analista de Sistemas 1 | 2h | 0.6 |
| 79 | 1.2.2.2.2.12 | RF 25 - Avaliar Pedido |  | 2h | 2016-10-17 11:00 A | 2016-10-17 14:00 | 65 | 2h | 2016-09-23 08:00 | 2016-09-23 17:00 | 0d | Analista de Sistemas 1 | 2h | 0.6 |
| 80 | 1.2.2.2.2.13 | RF 26 - Visualizar Informações do Salão |  | 2h | 2016-10-17 16:00 A | 2016-10-18 09:00 | 66 | 2h | 2016-09-26 08:00 | 2016-09-26 17:00 | 0d | Analista de Sistemas 1 | 2h | 0.6 |
| 81 | 1.2.2.2.2.14 | Reunião para Acompanhamento do Desempenho |  | 1h | 2016-10-18 09:00 A | 2016-10-18 10:00 | 80 | 1h |  |  | 0d | Gerente de Projeto; Diretor do Salão | 2h | 0.48 |
| 82 | 1.2.3 | Construção da Arquitetura do Sistema |  | 8h | 2016-10-18 09:00 A | 2016-10-19 09:00 | 80 | 8h | 2016-09-27 11:00 | 2016-09-27 12:00 | 0d | Arquiteto de Sistema | 8h | 3.4 |
| 83 | 1.2.4 | Reunião de Apresentação da Arquitetura do Sistema |  | 1h | 2016-10-19 09:00 A | 2016-10-19 10:00 | 82 | 1h | 2016-09-27 13:00 | 2016-09-27 14:00 | 0d | Gerente de Projeto; Desenvolvedor 1; Designer; Arquiteto de Sistema; Analista de Sistemas 2 | 5h | 1.67 |
| 84 | 1.2.5 | Atividades de Monitoramento e Controle | milestone | 0h | 2016-09-13 14:00 A | 2016-09-13 14:00 | 20SS | 0h |  |  | 0d |  |  |  |
| 85 | 1.2.6 | Marco M2 | milestone | 0h | 2016-10-19 10:00 A | 2016-10-19 10:00 | 83 | 0h | 2016-09-27 14:00 | 2016-09-27 14:00 | 0d |  |  |  |
| 86 | 1.3 | **Fase Intermediária I** |  | 24.54d? | 2016-10-19 10:00 A | 2016-11-22 15:19 | 85 | 24.54d? | 2016-08-30 08:00 | 2016-09-29 09:19 | 0d |  | 418.97h | 93.04 |
| 87 | 1.3.1 | Reunião para Construção dos Protótipos de Baixa Fidelidade |  | 1.33h | 2016-10-19 10:00 A | 2016-10-19 11:19 | 85 | 1.33h | 2016-09-27 14:00 | 2016-09-27 15:19 | 0d | Designer; Diretor do Salão; Fornecedor de Requisito 1 | 3.99h | 0.62 |
| 88 | 1.3.2 | Revisões de Qualidade |  | 16h | 2016-10-19 11:19 A | 2016-10-21 11:19 | 87 | 16h |  |  | 0d | Auditor; Supervisor de Qualidade | 32h |  |
| 89 | 1.3.3 | **Etapa I** |  | 1.25d | 2016-10-19 11:19 A | 2016-10-20 14:19 | 87 | 1.25d | 2016-09-27 15:19 | 2016-09-28 16:19 | 0d |  | 35h | 8.6 |
| 90 | 1.3.3.1 | **Prototipação** |  | 0.38d | 2016-10-19 11:19 A | 2016-10-19 15:19 | 87 | 0.38d | 2016-09-27 15:19 | 2016-09-28 09:19 | 0d |  | 3h | 0.49 |
| 91 | 1.3.3.1.1 | RF 7: Cadastrar Cliente |  | 1h | 2016-10-19 11:19 A | 2016-10-19 13:19 | 87 | 1h | 2016-09-27 15:19 | 2016-09-27 16:19 | 0d | Designer | 1h | 0.17 |
| 92 | 1.3.3.1.2 | RF 8: Alterar Cadastro do Cliente |  | 1h | 2016-10-19 13:19 A | 2016-10-19 14:19 | 91 | 1h | 2016-09-27 16:19 | 2016-09-28 08:19 | 0d | Designer | 1h | 0.17 |
| 93 | 1.3.3.1.3 | RF 9: Apagar Cadastro do Cliente |  | 1h | 2016-10-19 14:19 A | 2016-10-19 15:19 | 92 | 1h | 2016-09-28 08:19 | 2016-09-28 09:19 | 0d | Designer | 1h | 0.17 |

| ID | WBS | Task | Type | Duration | Start | Finish | Predecessors | Remaining | Baseline 1 start | Baseline 1 finish | Total slack | Resources | Work | Cost |
| --- | --- | --- | --- | --- | --- | --- | --- | --- | --- | --- | --- | --- | --- | --- |
| 94 | 1.3.3.2 | **Implementação** |  | 0.38d | 2016-10-19 15:19 A | 2016-10-20 09:19 | 93 | 0.38d | 2016-09-27 16:19 | 2016-09-28 13:19 | 0d |  | 9h | 2.7 |
| 95 | 1.3.3.2.1 | RF 7: Cadastrar Cliente |  | 3h | 2016-10-19 15:19 A | 2016-10-20 09:19 | 91 | 3h | 2016-09-27 16:19 | 2016-09-28 10:19 | 0d | Desenvolvedor 1 | 3h | 0.9 |
| 96 | 1.3.3.2.2 | RF 8: Alterar Cadastro do Cliente |  | 3h | 2016-10-19 15:19 A | 2016-10-20 09:19 | 92 | 3h | 2016-09-28 08:19 | 2016-09-28 11:19 | 0d | Desenvolvedor 2 | 3h | 0.9 |
| 97 | 1.3.3.2.3 | RF 9: Apagar Cadastro do Cliente |  | 3h | 2016-10-19 15:19 A | 2016-10-20 09:19 | 93 | 3h | 2016-09-28 09:19 | 2016-09-28 13:19 | 0d | Desenvolvedor 1 | 3h | 0.9 |
| 98 | 1.3.3.3 | **Teste** |  | 0.12d | 2016-10-20 09:19 A | 2016-10-20 10:19 | 97 | 0.12d | 2016-09-28 10:19 | 2016-09-28 14:19 | 0d |  | 6h | 0.97 |
| 99 | 1.3.3.3.1 | RF 7: Cadastrar Cliente |  | 1h | 2016-10-20 09:19 A | 2016-10-20 10:19 | 95 | 1h | 2016-09-28 10:19 | 2016-09-28 11:19 | 0d | Analista de Testes; Testador | 2h | 0.33 |
| 100 | 1.3.3.3.2 | RF 8: Alterar Cadastro do Cliente |  | 1h | 2016-10-20 09:19 A | 2016-10-20 10:19 | 96 | 1h | 2016-09-28 11:19 | 2016-09-28 13:19 | 0d | Analista de Testes; Testador | 2h | 0.33 |
| 101 | 1.3.3.3.3 | RF 9: Apagar Cadastro do Cliente |  | 1h | 2016-10-20 09:19 A | 2016-10-20 10:19 | 97 | 1h | 2016-09-28 13:19 | 2016-09-28 14:19 | 0d | Analista de Testes; Testador | 2h | 0.33 |
| 102 | 1.3.3.4 | **Validação** |  | 0.12d | 2016-10-20 10:19 A | 2016-10-20 11:19 | 101 | 0.12d | 2016-09-28 11:19 | 2016-09-28 15:19 | 0d |  | 9h | 2.25 |
| 103 | 1.3.3.4.1 | RF 7: Cadastrar Cliente |  | 1h | 2016-10-20 10:19 A | 2016-10-20 11:19 | 99 | 1h | 2016-09-28 11:19 | 2016-09-28 13:19 | 0d | Arquiteto de Sistema; Analista de Testes; Testador | 3h | 0.75 |
| 104 | 1.3.3.4.2 | RF 8: Alterar Cadastro do Cliente |  | 1h | 2016-10-20 10:19 A | 2016-10-20 11:19 | 100 | 1h | 2016-09-28 13:19 | 2016-09-28 14:19 | 0d | Arquiteto de Sistema; Analista de Testes; Testador | 3h | 0.75 |
| 105 | 1.3.3.4.3 | RF 9: Apagar Cadastro do Cliente |  | 1h | 2016-10-20 10:19 A | 2016-10-20 11:19 | 101 | 1h | 2016-09-28 14:19 | 2016-09-28 15:19 | 0d | Arquiteto de Sistema; Analista de Testes; Testador | 3h | 0.75 |
| 106 | 1.3.3.5 | **Implantação** |  | 0.25d | 2016-10-20 11:19 A | 2016-10-20 14:19 | 105 | 0.25d | 2016-09-28 13:19 | 2016-09-28 16:19 | 0d |  | 8h | 2.17 |
| 107 | 1.3.3.5.1 | RF 7: Cadastrar Cliente |  | 1h | 2016-10-20 11:19 A | 2016-10-20 13:19 | 103 | 1h | 2016-09-28 13:19 | 2016-09-28 14:19 | 0d | Arquiteto de Sistema; Analista de Implantação | 2h | 0.56 |
| 108 | 1.3.3.5.2 | RF 8: Alterar Cadastro do Cliente |  | 1h | 2016-10-20 11:19 A | 2016-10-20 13:19 | 104 | 1h | 2016-09-28 14:19 | 2016-09-28 15:19 | 0d | Arquiteto de Sistema; Analista de Implantação | 2h | 0.56 |
| 109 | 1.3.3.5.3 | Reunião para Acompanhamento do Desempenho |  | 1h | 2016-10-20 13:19 A | 2016-10-20 14:19 | 108 | 1h |  |  | 0d | Gerente de Projeto; Diretor do Salão | 2h | 0.48 |
| 110 | 1.3.3.5.4 | RF 9: Apagar Cadastro do Cliente |  | 1h | 2016-10-20 11:19 A | 2016-10-20 13:19 | 105 | 1h | 2016-09-28 15:19 | 2016-09-28 16:19 | 0d | Arquiteto de Sistema; Analista de Implantação | 2h | 0.56 |
| 111 | 1.3.4 | I Reunião de Entrega de Funcionalidades |  | 2h | 2016-10-20 13:19 A | 2016-10-20 15:19 | 110 | 2h | 2016-09-28 16:19 | 2016-09-29 09:19 | 0d | Gerente de Projeto; Analista de Implantação; Diretor do Salão | 6h | 1.24 |
| 112 | 1.3.5 | Atividades de Monitoramento e Controle | milestone | 0h | 2016-10-19 10:00 A | 2016-10-19 10:00 | 87SS | 0h |  |  | 0d | Gerente de Projeto |  |  |
| 113 | 1.3.6 | Marco M3 | milestone | 0h | 2016-10-20 15:19 A | 2016-10-20 15:19 | 111 | 0h | 2016-08-30 08:00 | 2016-08-30 08:00 | 0d |  |  |  |
| 114 | 1.3.7 | **Etapa II** |  | 7.71d | 2016-10-20 15:19 A | 2016-11-01 11:59 | 113 | 7.71d | 2016-08-30 08:00 | 2016-09-01 17:00 | 0d |  | 91h | 21.91 |
| 115 | 1.3.7.1 | **Prototipação** |  | 1d | 2016-10-20 15:19 A | 2016-10-21 15:19 | 113 | 1d | 2016-08-30 08:00 | 2016-08-30 17:00 | 0d |  | 8h | 1.32 |
| 116 | 1.3.7.1.1 | RF 1: Cadastrar Pedido |  | 2h | 2016-10-20 15:19 A | 2016-10-21 08:19 | 113 | 2h | 2016-08-30 08:00 | 2016-08-30 10:00 | 0d | Designer | 2h | 0.33 |
| 117 | 1.3.7.1.2 | RF 4: Alterar Pedido |  | 4h | 2016-10-21 08:19 A | 2016-10-21 13:19 | 116 | 4h | 2016-08-30 10:00 | 2016-08-30 15:00 | 0d | Designer | 4h | 0.66 |
| 118 | 1.3.7.1.3 | RF 6: Excluir Pedido |  | 2h | 2016-10-21 13:19 A | 2016-10-21 15:19 | 117 | 2h | 2016-08-30 15:00 | 2016-08-30 17:00 | 0d | Designer | 2h | 0.33 |

| ID | WBS | Task | Type | Duration | Start | Finish | Predecessors | Remaining | Baseline 1 start | Baseline 1 finish | Total slack | Resources | Work | Cost |
| --- | --- | --- | --- | --- | --- | --- | --- | --- | --- | --- | --- | --- | --- | --- |
| 119 | 1.3.7.2 | **Implementação** |  | 2.25d | 2016-10-21 15:19 A | 2016-10-26 08:19 | 118 | 2.25d | 2016-08-30 10:00 | 2016-08-31 15:00 | 0d |  | 18h | 5.4 |
| 120 | 1.3.7.2.1 | RF 1: Cadastrar Pedido |  | 6h | 2016-10-21 15:19 A | 2016-10-24 13:19 | 116 | 6h | 2016-08-30 10:00 | 2016-08-30 17:00 | 0d | Desenvolvedor 1 | 6h | 1.8 |
| 121 | 1.3.7.2.2 | RF 4: Alterar Pedido |  | 6h | 2016-10-24 13:19 A | 2016-10-25 10:19 | 117 | 6h | 2016-08-30 15:00 | 2016-08-31 12:00 | 0d | Desenvolvedor 1 | 6h | 1.8 |
| 122 | 1.3.7.2.3 | RF 6: Excluir Pedido |  | 6h | 2016-10-25 10:19 A | 2016-10-26 08:19 | 118 | 6h | 2016-08-31 08:00 | 2016-08-31 15:00 | 0d | Desenvolvedor 1 | 6h | 1.8 |
| 123 | 1.3.7.3 | **Teste** |  | 1.25d | 2016-10-26 08:19 A | 2016-10-27 10:19 | 122 | 1.25d | 2016-08-31 08:00 | 2016-09-01 09:00 | 0d |  | 20h | 3.25 |
| 124 | 1.3.7.3.1 | RF 1: Cadastrar Pedido |  | 3h | 2016-10-26 08:19 A | 2016-10-26 11:19 | 120 | 3h | 2016-08-31 08:00 | 2016-08-31 11:00 | 0d | Analista de Testes; Testador | 6h | 0.97 |
| 125 | 1.3.7.3.2 | RF 4: Alterar Pedido |  | 4h | 2016-10-26 08:19 A | 2016-10-26 13:19 | 121 | 4h | 2016-08-31 13:00 | 2016-08-31 17:00 | 0d | Analista de Testes; Testador | 8h | 1.3 |
| 126 | 1.3.7.3.3 | RF 6: Excluir Pedido |  | 3h | 2016-10-26 16:19 A | 2016-10-27 10:19 | 122 | 3h | 2016-08-31 15:00 | 2016-09-01 09:00 | 0d | Analista de Testes; Testador | 6h | 0.97 |
| 127 | 1.3.7.4 | **Validação** |  | 0.75d | 2016-10-27 15:19 A | 2016-10-28 13:19 | 126 | 0.75d | 2016-08-31 11:00 | 2016-09-01 11:00 | 0d |  | 21h | 5.25 |
| 128 | 1.3.7.4.1 | RF 1: Cadastrar Pedido |  | 2h | 2016-10-27 15:19 A | 2016-10-28 08:19 | 124 | 2h | 2016-08-31 11:00 | 2016-08-31 14:00 | 0d | Arquiteto de Sistema; Analista de Testes; Testador | 6h | 1.5 |
| 129 | 1.3.7.4.2 | RF 4: Alterar Pedido |  | 3h | 2016-10-28 09:19 A | 2016-10-28 13:19 | 125 | 3h | 2016-09-01 08:00 | 2016-09-01 11:00 | 0d | Arquiteto de Sistema; Analista de Testes; Testador | 9h | 2.25 |
| 130 | 1.3.7.4.3 | RF 6: Excluir Pedido |  | 2h | 2016-10-28 09:39 A | 2016-10-28 11:39 | 126 | 2h | 2016-09-01 09:00 | 2016-09-01 11:00 | 0d | Arquiteto de Sistema; Analista de Testes; Testador | 6h | 1.5 |
| 131 | 1.3.7.5 | **Implantação** |  | 1.5d | 2016-10-28 16:59 A | 2016-11-01 11:59 | 130 | 1.5d | 2016-08-31 14:00 | 2016-09-01 17:00 | 0d |  | 24h | 6.7 |
| 132 | 1.3.7.5.1 | RF 1: Cadastrar Pedido |  | 3h | 2016-10-28 16:59 A | 2016-10-31 10:59 | 128 | 3h | 2016-08-31 14:00 | 2016-08-31 17:00 | 0d | Arquiteto de Sistema; Analista de Implantação | 6h | 1.7 |
| 133 | 1.3.7.5.2 | RF 4: Alterar Pedido |  | 5h | 2016-10-31 09:40 A | 2016-10-31 15:40 | 129 | 5h | 2016-09-01 11:00 | 2016-09-01 17:00 | 0d | Arquiteto de Sistema; Analista de Implantação | 10h | 2.83 |
| 134 | 1.3.7.5.3 | RF 6: Excluir Pedido |  | 3h | 2016-10-31 16:59 A | 2016-11-01 10:59 | 130 | 3h | 2016-09-01 11:00 | 2016-09-01 15:00 | 0d | Arquiteto de Sistema; Analista de Implantação | 6h | 1.7 |
| 135 | 1.3.7.5.4 | Reunião para Acompanhamento do Desempenho |  | 1h | 2016-11-01 10:59 A | 2016-11-01 11:59 | 134 | 1h |  |  | 0d | Gerente de Projeto; Diretor do Salão | 2h | 0.48 |
| 136 | 1.3.8 | II Reunião de Entrega de Funcionalidades |  | 2h | 2016-11-01 10:59 A | 2016-11-01 13:59 | 134 | 2h | 2016-09-01 15:00 | 2016-09-01 16:59 | 0d | Analista de Implantação; Diretor do Salão | 3.99h | 0.28 |
| 137 | 1.3.9 | Atividades de Monitoramento e Controle | milestone | 0h | 2016-10-20 15:19 A | 2016-10-20 15:19 | 116SS | 0h |  |  | 0d |  |  |  |
| 138 | 1.3.10 | Marco M4 | milestone | 0h | 2016-11-01 13:59 A | 2016-11-01 13:59 | 136 | 0h | 2016-09-01 16:59 | 2016-09-01 16:59 | 0d |  |  |  |
| 139 | 1.3.11 | **Etapa III** |  | 8.04d | 2016-11-01 13:59 A | 2016-11-11 14:17 | 136 | 8.04d | 2016-09-01 16:59 | 2016-09-08 14:59 | 0d |  | 133h | 32.2 |
| 140 | 1.3.11.1 | **Prototipação** |  | 1.25d | 2016-11-01 13:59 A | 2016-11-02 15:59 | 138 | 1.25d | 2016-09-01 16:59 | 2016-09-05 09:59 | 0d |  | 10h | 1.65 |
| 141 | 1.3.11.1.1 | RF 2: Cadastrar Serviço |  | 4h | 2016-11-01 13:59 A | 2016-11-02 08:59 | 138 | 4h | 2016-09-01 16:59 | 2016-09-02 11:59 | 0d | Designer | 4h | 0.66 |
| 142 | 1.3.11.1.2 | RF 3: Alterar Serviço |  | 4h | 2016-11-02 08:59 A | 2016-11-02 13:59 | 141 | 4h | 2016-09-02 11:59 | 2016-09-02 16:59 | 0d | Designer | 4h | 0.66 |
| 143 | 1.3.11.1.3 | RF 6: Excluir Serviço |  | 2h | 2016-11-02 13:59 A | 2016-11-02 15:59 | 142 | 2h | 2016-09-02 16:59 | 2016-09-05 09:59 | 0d | Designer | 2h | 0.33 |

| ID | WBS | Task | Duration | Start | Finish | Predecessors | Remaining | Baseline 1 start | Baseline 1 finish | Total slack | Resources | Work | Cost |
| --- | --- | --- | --- | --- | --- | --- | --- | --- | --- | --- | --- | --- | --- |
| 144 | 1.3.11.2 | **Implementação** | 2d | 2016-11-02 15:59 A | 2016-11-04 15:59 | 143 | 2d | 2016-09-02 11:59 | 2016-09-05 16:59 | 0d |  | 22h | 6.6 |
| 145 | 1.3.11.2.1 | RF 2: Cadastrar Serviço | 8h | 2016-11-02 15:59 A | 2016-11-03 15:59 | 143 | 8h | 2016-09-02 11:59 | 2016-09-05 11:59 | 0d | Desenvolvedor 2 | 8h | 2.4 |
| 146 | 1.3.11.2.2 | RF 3: Alterar Serviço | 8h | 2016-11-03 15:59 A | 2016-11-04 15:59 | 145 | 8h | 2016-09-02 16:59 | 2016-09-05 16:59 | 0d | Desenvolvedor 1 | 8h | 2.4 |
| 147 | 1.3.11.2.3 | RF 6: Excluir Serviço | 6h | 2016-11-03 15:59 A | 2016-11-04 13:59 | 143 | 6h | 2016-09-05 09:59 | 2016-09-05 16:59 | 0d | Desenvolvedor 2 | 6h | 1.8 |
| 148 | 1.3.11.3 | **Teste** | 0.79d | 2016-11-04 13:59 A | 2016-11-07 11:17 | 147 | 0.79d | 2016-09-05 11:59 | 2016-09-06 10:59 | 0d |  | 20h | 3.25 |
| 149 | 1.3.11.3.1 | RF 2: Cadastrar Serviço | 4h | 2016-11-04 13:59 A | 2016-11-07 08:59 | 147 | 4h | 2016-09-05 11:59 | 2016-09-05 16:59 | 0d | Analista de Testes; Testador | 8h | 1.3 |
| 150 | 1.3.11.3.2 | RF 3: Alterar Serviço | 3h | 2016-11-04 15:59 A | 2016-11-07 09:59 | 146 | 3h | 2016-09-05 16:59 | 2016-09-06 10:59 | 0d | Analista de Testes; Testador | 6h | 0.97 |
| 151 | 1.3.11.3.3 | RF 6: Excluir Serviço | 3h | 2016-11-07 08:17 A | 2016-11-07 11:17 | 147 | 3h | 2016-09-05 16:59 | 2016-09-06 10:59 | 0d | Analista de Testes; Testador | 6h | 0.97 |
| 152 | 1.3.11.4 | **Validação** | 2.83d | 2016-11-08 09:40 A | 2016-11-11 08:17 | 151 | 2.83d | 2016-09-05 16:59 | 2016-09-08 10:59 | 0d |  | 66h | 16.5 |
| 153 | 1.3.11.4.1 | RF 2: Cadastrar Serviço | 3h | 2016-11-08 09:40 A | 2016-11-08 13:40 | 151 | 3h | 2016-09-05 16:59 | 2016-09-06 10:59 | 0d | Arquiteto de Sistema; Analista de Testes; Testador | 9h | 2.25 |
| 154 | 1.3.11.4.2 | RF 3: Alterar Serviço | 3h | 2016-11-08 10:57 A | 2016-11-08 14:57 | 150 | 3h | 2016-09-06 10:59 | 2016-09-06 14:59 | 0d | Arquiteto de Sistema; Analista de Testes; Testador | 9h | 2.25 |
| 155 | 1.3.11.4.3 | RF 6: Excluir Serviço | 2d | 2016-11-09 08:17 A | 2016-11-11 08:17 | 151 | 2d | 2016-09-06 10:59 | 2016-09-08 10:59 | 0d | Arquiteto de Sistema; Analista de Testes; Testador | 48h | 12 |
| 156 | 1.3.11.5 | **Implantação** | 0.62d | 2016-11-11 08:17 A | 2016-11-11 14:17 | 155 | 0.62d | 2016-09-06 10:59 | 2016-09-08 14:59 | 0d |  | 15h | 4.21 |
| 157 | 1.3.11.5.1 | RF 2: Cadastrar Serviço | 2.5h | 2016-11-11 08:17 A | 2016-11-11 10:47 | 155 | 2.5h | 2016-09-06 10:59 | 2016-09-06 16:59 | 0d | Arquiteto de Sistema; Analista de Implantação | 5h | 1.41 |
| 158 | 1.3.11.5.2 | RF 3: Alterar Serviço | 2.5h | 2016-11-11 10:47 A | 2016-11-11 14:17 | 154 | 2.5h | 2016-09-06 14:59 | 2016-09-07 10:59 | 0d | Arquiteto de Sistema; Analista de Implantação | 5h | 1.41 |
| 159 | 1.3.11.5.3 | RF 6: Excluir Serviço | 3h | 2016-11-11 08:17 A | 2016-11-11 11:17 | 155 | 3h | 2016-09-08 10:59 | 2016-09-08 14:59 | 0d | Desenvolvedor 1 | 3h | 0.9 |
| 160 | 1.3.11.5.4 | Reunião para Acompanhamento do Desempenho | 1h | 2016-11-11 11:17 A | 2016-11-11 13:17 | 159 | 1h |  |  | 0d | Gerente de Projeto; Diretor do Salão | 2h | 0.48 |
| 161 | 1.3.12 | III Reunião de Entrega de Funcionalidades | 2h | 2016-11-11 11:17 A | 2016-11-11 14:17 | 159 | 2h | 2016-09-08 14:59 | 2016-09-08 16:59 | 0d | Analista de Implantação; Diretor do Salão | 3.99h | 0.28 |
| 162 | 1.3.13 | Marco M5 | 0h | 2016-11-11 14:17 A | 2016-11-11 14:17 | 161 | 0h | 2016-09-08 16:59 | 2016-09-08 16:59 | 0d |  |  |  |
| 163 | 1.3.14 | **Etapa IV** | 5.89d | 2016-11-11 14:17 A | 2016-11-21 13:22 | 161 | 5.89d | 2016-09-08 16:59 | 2016-09-13 11:59 | 0d |  | 80h | 19.38 |
| 164 | 1.3.14.1 | **Prototipação** | 0.75d | 2016-11-11 14:17 A | 2016-11-14 11:17 | 159 | 0.75d | 2016-09-08 16:59 | 2016-09-09 14:59 | 0d |  | 6h | 0.99 |
| 165 | 1.3.14.1.1 | RF 11: Consultar Horário | 2h | 2016-11-11 14:17 A | 2016-11-11 16:17 | 162 | 2h | 2016-09-08 16:59 | 2016-09-09 09:59 | 0d | Designer | 2h | 0.33 |
| 166 | 1.3.14.1.2 | RF 12: Login de Funcionário | 2h | 2016-11-11 16:17 A | 2016-11-14 09:17 | 165 | 2h | 2016-09-09 09:59 | 2016-09-09 11:59 | 0d | Designer | 2h | 0.33 |
| 167 | 1.3.14.1.3 | RF 13: Logout de Funcionário | 2h | 2016-11-14 09:17 A | 2016-11-14 11:17 | 166 | 2h | 2016-09-09 11:59 | 2016-09-09 14:59 | 0d | Designer | 2h | 0.33 |

| ID | WBS | Task | Type | Duration | Start | Finish | Predecessors | Remaining | Baseline 1 start | Baseline 1 finish | Total slack | Resources | Work | Cost |
| --- | --- | --- | --- | --- | --- | --- | --- | --- | --- | --- | --- | --- | --- | --- |
| 168 | 1.3.14.2 | **Implementação** |  | 1.5d | 2016-11-14 11:17 A | 2016-11-15 16:17 | 167 | 1.5d | 2016-09-09 09:59 | 2016-09-12 11:59 | 0d |  | 18h | 5.4 |
| 169 | 1.3.14.2.1 | RF 11: Consultar Horário |  | 6h | 2016-11-14 11:17 A | 2016-11-15 09:17 | 165 | 6h | 2016-09-09 09:59 | 2016-09-09 16:59 | 0d | Desenvolvedor 1 | 6h | 1.8 |
| 170 | 1.3.14.2.2 | RF 12: Login de Funcionário |  | 6h | 2016-11-14 11:17 A | 2016-11-15 09:17 | 166 | 6h | 2016-09-09 11:59 | 2016-09-12 09:59 | 0d | Desenvolvedor 2 | 6h | 1.8 |
| 171 | 1.3.14.2.3 | RF 13: Logout de Funcionário |  | 6h | 2016-11-15 09:17 A | 2016-11-15 16:17 | 167 | 6h | 2016-09-09 14:59 | 2016-09-12 11:59 | 0d | Desenvolvedor 1 | 6h | 1.8 |
| 172 | 1.3.14.3 | **Teste** |  | 0.88d | 2016-11-15 16:17 A | 2016-11-16 15:19 | 171 | 0.88d | 2016-09-09 16:59 | 2016-09-12 15:59 | 0d |  | 18h | 2.92 |
| 173 | 1.3.14.3.1 | RF 11: Consultar Horário |  | 3h | 2016-11-15 16:17 A | 2016-11-16 10:17 | 169 | 3h | 2016-09-09 16:59 | 2016-09-12 10:59 | 0d | Analista de Testes; Testador | 6h | 0.97 |
| 174 | 1.3.14.3.2 | RF 12: Login de Funcionário |  | 3h | 2016-11-15 16:17 A | 2016-11-16 10:17 | 170 | 3h | 2016-09-12 09:59 | 2016-09-12 13:59 | 0d | Analista de Testes; Testador | 6h | 0.97 |
| 175 | 1.3.14.3.3 | RF 13: Logout de Funcionário |  | 3h | 2016-11-16 11:19 A | 2016-11-16 15:19 | 171 | 3h | 2016-09-12 11:59 | 2016-09-12 15:59 | 0d | Analista de Testes; Testador | 6h | 0.97 |
| 176 | 1.3.14.4 | **Validação** |  | 0.64d | 2016-11-17 10:12 A | 2016-11-17 16:19 | 175 | 0.64d | 2016-09-12 10:59 | 2016-09-13 08:59 | 0d |  | 18h | 4.5 |
| 177 | 1.3.14.4.1 | RF 11: Consultar Horário |  | 2h | 2016-11-17 10:12 A | 2016-11-17 13:12 | 173 | 2h | 2016-09-12 10:59 | 2016-09-12 13:59 | 0d | Arquiteto de Sistema; Analista de Testes; Testador | 6h | 1.5 |
| 178 | 1.3.14.4.2 | RF 12: Login de Funcionário |  | 2h | 2016-11-17 13:13 A | 2016-11-17 15:13 | 174 | 2h | 2016-09-12 13:59 | 2016-09-12 15:59 | 0d | Arquiteto de Sistema; Analista de Testes; Testador | 6h | 1.5 |
| 179 | 1.3.14.4.3 | RF 13: Logout de Funcionário |  | 2h | 2016-11-17 14:19 A | 2016-11-17 16:19 | 175 | 2h | 2016-09-12 15:59 | 2016-09-13 08:59 | 0d | Arquiteto de Sistema; Analista de Testes; Testador | 6h | 1.5 |
| 180 | 1.3.14.5 | **Implantação** |  | 1.42d | 2016-11-18 09:01 A | 2016-11-21 13:22 | 179 | 1.42d | 2016-09-12 13:59 | 2016-09-13 11:59 | 0d |  | 20h | 5.57 |
| 181 | 1.3.14.5.1 | RF 11: Consultar Horário |  | 3h | 2016-11-18 09:01 A | 2016-11-18 13:01 | 177 | 3h | 2016-09-12 13:59 | 2016-09-12 16:59 | 0d | Arquiteto de Sistema; Analista de Implantação | 6h | 1.7 |
| 182 | 1.3.14.5.2 | RF 12: Login de Funcionário |  | 3h | 2016-11-18 13:01 A | 2016-11-18 16:01 | 178 | 3h | 2016-09-12 15:59 | 2016-09-13 09:59 | 0d | Arquiteto de Sistema; Analista de Implantação | 6h | 1.7 |
| 183 | 1.3.14.5.3 | RF 13: Logout de Funcionário |  | 3h | 2016-11-21 08:22 A | 2016-11-21 11:22 | 179 | 3h | 2016-09-13 08:59 | 2016-09-13 11:59 | 0d | Arquiteto de Sistema; Analista de Implantação | 6h | 1.7 |
| 184 | 1.3.14.5.4 | Reunião para Acompanhamento do Desempenho |  | 1h | 2016-11-21 11:22 A | 2016-11-21 13:22 | 183 | 1h |  |  | 0d | Gerente de Projeto; Diretor do Salão | 2h | 0.48 |
| 185 | 1.3.15 | IV Reunião de Entrega de Funcionalidades |  | 3h | 2016-11-21 11:22 A | 2016-11-21 15:22 | 183 | 3h | 2016-09-13 11:59 | 2016-09-13 14:59 | 0d | Analista de Implantação; Diretor do Salão | 6h | 0.42 |
| 186 | 1.3.16 | Reunião de fechamento da fase com equipe de projeto |  | 2h | 2016-11-21 15:22 A | 2016-11-22 08:22 | 185 | 2h | 2016-09-13 14:59 | 2016-09-13 16:59 | 0d | Gerente de Projeto; Desenvolvedor 1; Analista de Sistemas 1; Designer; Arquiteto de Sistema; Analista de Testes; Testador; Analista de Implantação | 16h | 4.27 |
| 187 | 1.3.17 | Atividades de Monitoramento e Controle |  | 1d? | 2016-11-21 15:19 A | 2016-11-22 15:19 | 188SF | 1d? |  |  | 0d | Gerente de Projeto | 8h | 3.84 |
| 188 | 1.3.18 | Marco M6 | milestone | 0h | 2016-11-22 08:22 A | 2016-11-22 08:22 | 186 | 0h | 2016-09-13 16:59 | 2016-09-13 16:59 | 0d |  |  |  |
| 189 | 1.4 | **Fase Intermediária II** |  | 12.33d | 2016-11-22 08:22 A | 2016-12-08 11:01 | 188 | 12.33d | 2016-09-13 16:59 | 2016-09-23 10:59 | 0d |  | 253h | 53.21 |
| 190 | 1.4.1 | Revisões de Qualidade |  | 16h | 2016-11-22 08:22 A | 2016-11-24 08:22 | 188 | 16h |  |  | 0d | Auditor; Supervisor de Qualidade | 32h |  |
| 191 | 1.4.2 | **Etapa V** |  | 6.09d | 2016-11-22 08:22 A | 2016-11-30 09:06 | 188 | 6.09d | 2016-09-13 16:59 | 2016-09-16 16:59 | 0d |  | 89h | 21.62 |
| 192 | 1.4.2.1 | **Prototipação** |  | 1d | 2016-11-22 08:22 A | 2016-11-23 08:22 | 188 | 1d | 2016-09-13 16:59 | 2016-09-14 16:59 | 0d |  | 8h | 1.32 |
| 193 | 1.4.2.1.1 | RF 14: Registrar Cliente no Aplicativo |  | 4h | 2016-11-22 08:22 A | 2016-11-22 13:22 | 188 | 4h | 2016-09-13 16:59 | 2016-09-14 11:59 | 0d | Designer | 4h | 0.66 |
| 194 | 1.4.2.1.2 | RF 15: Realizar login |  | 1h | 2016-11-22 13:22 A | 2016-11-22 14:22 | 193 | 1h | 2016-09-14 11:59 | 2016-09-14 13:59 | 0d | Designer | 1h | 0.17 |
| 195 | 1.4.2.1.3 | RF 16: Realizar logout |  | 1h | 2016-11-22 14:22 A | 2016-11-22 15:22 | 194 | 1h | 2016-09-14 13:59 | 2016-09-14 14:59 | 0d | Designer | 1h | 0.17 |
| 196 | 1.4.2.1.4 | RF 20: Apagar Registro |  | 2h | 2016-11-22 15:22 A | 2016-11-23 08:22 | 195 | 2h | 2016-09-14 14:59 | 2016-09-14 16:59 | 0d | Designer | 2h | 0.33 |

| ID | WBS | Task | Type | Duration | Start | Finish | Predecessors | Remaining | Baseline 1 start | Baseline 1 finish | Total slack | Resources | Work | Cost |
| --- | --- | --- | --- | --- | --- | --- | --- | --- | --- | --- | --- | --- | --- | --- |
| 197 | 1.4.2.2 | **Implementação** |  | 1.36d | 2016-11-23 08:22 A | 2016-11-24 11:16 | 196 | 1.36d | 2016-09-14 11:59 | 2016-09-15 14:59 | 0d |  | 20h | 6 |
| 198 | 1.4.2.2.1 | RF 14: Registrar Cliente no Aplicativo |  | 8h | 2016-11-23 08:22 A | 2016-11-24 08:22 | 193 | 8h | 2016-09-14 11:59 | 2016-09-15 11:59 | 0d | Desenvolvedor 2 | 8h | 2.4 |
| 199 | 1.4.2.2.2 | RF 15: Realizar login |  | 3h | 2016-11-23 08:22 A | 2016-11-23 11:22 | 194 | 3h | 2016-09-14 13:59 | 2016-09-14 16:59 | 0d | Desenvolvedor 1 | 3h | 0.9 |
| 200 | 1.4.2.2.3 | RF 16: Realizar logout |  | 3h | 2016-11-24 08:16 A | 2016-11-24 11:16 | 195 | 3h | 2016-09-14 14:59 | 2016-09-15 08:59 | 0d | Desenvolvedor 2 | 3h | 0.9 |
| 201 | 1.4.2.2.4 | RF 20: Apagar Registro |  | 6h | 2016-11-23 11:22 A | 2016-11-24 09:22 | 196 | 6h | 2016-09-14 16:59 | 2016-09-15 14:59 | 0d | Desenvolvedor 1 | 6h | 1.8 |
| 202 | 1.4.2.3 | **Teste** |  | 1.12d | 2016-11-24 09:22 A | 2016-11-25 10:19 | 201 | 1.12d | 2016-09-14 16:59 | 2016-09-16 08:59 | 0d |  | 18h | 2.92 |
| 203 | 1.4.2.3.1 | RF 14: Registrar Cliente no Aplicativo |  | 4h | 2016-11-24 09:22 A | 2016-11-24 14:22 | 198 | 4h | 2016-09-15 11:59 | 2016-09-15 16:59 | 0d | Analista de Testes; Testador | 8h | 1.3 |
| 204 | 1.4.2.3.2 | RF 15: Realizar login |  | 1h | 2016-11-24 09:22 A | 2016-11-24 10:22 | 199 | 1h | 2016-09-14 16:59 | 2016-09-15 08:59 | 0d | Analista de Testes; Testador | 2h | 0.33 |
| 205 | 1.4.2.3.3 | RF 16: Realizar logout |  | 1h | 2016-11-24 11:16 A | 2016-11-24 13:16 | 200 | 1h | 2016-09-15 08:59 | 2016-09-15 09:59 | 0d | Analista de Testes; Testador | 2h | 0.33 |
| 206 | 1.4.2.3.4 | RF 20: Apagar Registro |  | 3h | 2016-11-24 16:19 A | 2016-11-25 10:19 | 201 | 3h | 2016-09-15 14:59 | 2016-09-16 08:59 | 0d | Analista de Testes; Testador | 6h | 0.97 |
| 207 | 1.4.2.4 | **Validação** |  | 0.57d | 2016-11-25 14:56 A | 2016-11-28 10:29 | 206 | 0.57d | 2016-09-15 08:59 | 2016-09-16 10:59 | 0d |  | 21h | 5.25 |
| 208 | 1.4.2.4.1 | RF 14: Registrar Cliente no Aplicativo |  | 3h | 2016-11-25 14:56 A | 2016-11-28 08:56 | 203 | 3h | 2016-09-15 16:59 | 2016-09-16 10:59 | 0d | Arquiteto de Sistema; Analista de Testes; Testador | 9h | 2.25 |
| 209 | 1.4.2.4.2 | RF 15: Realizar login |  | 1h | 2016-11-25 15:20 A | 2016-11-25 16:20 | 204 | 1h | 2016-09-15 08:59 | 2016-09-15 09:59 | 0d | Arquiteto de Sistema; Analista de Testes; Testador | 3h | 0.75 |
| 210 | 1.4.2.4.3 | RF 16: Realizar logout |  | 1h | 2016-11-28 08:20 A | 2016-11-28 09:20 | 205 | 1h | 2016-09-15 09:59 | 2016-09-15 10:59 | 0d | Arquiteto de Sistema; Analista de Testes; Testador | 3h | 0.75 |
| 211 | 1.4.2.4.4 | RF 20: Apagar Registro |  | 2h | 2016-11-28 08:29 A | 2016-11-28 10:29 | 206 | 2h | 2016-09-16 08:59 | 2016-09-16 10:59 | 0d | Arquiteto de Sistema; Analista de Testes; Testador | 6h | 1.5 |
| 212 | 1.4.2.5 | **Implantação** |  | 1.62d | 2016-11-28 13:06 A | 2016-11-30 09:06 | 211 | 1.62d | 2016-09-15 09:59 | 2016-09-16 16:59 | 0d |  | 22h | 6.13 |
| 213 | 1.4.2.5.1 | RF 14: Registrar Cliente no Aplicativo |  | 5h | 2016-11-28 13:06 A | 2016-11-29 09:06 | 208 | 5h | 2016-09-16 10:59 | 2016-09-16 16:59 | 0d | Arquiteto de Sistema; Analista de Implantação | 10h | 2.83 |
| 214 | 1.4.2.5.2 | RF 15: Realizar login |  | 1h | 2016-11-28 16:50 A | 2016-11-29 08:50 | 209 | 1h | 2016-09-15 09:59 | 2016-09-15 10:59 | 0d | Arquiteto de Sistema; Analista de Implantação | 2h | 0.56 |
| 215 | 1.4.2.5.3 | RF 16: Realizar logout |  | 1h | 2016-11-29 09:13 A | 2016-11-29 10:13 | 210 | 1h | 2016-09-15 10:59 | 2016-09-15 11:59 | 0d | Arquiteto de Sistema; Analista de Implantação | 2h | 0.56 |
| 216 | 1.4.2.5.4 | RF 20: Apagar Registro |  | 3h | 2016-11-29 14:06 A | 2016-11-30 08:06 | 211 | 3h | 2016-09-16 10:59 | 2016-09-16 14:59 | 0d | Arquiteto de Sistema; Analista de Implantação | 6h | 1.7 |
| 217 | 1.4.2.5.5 | Reunião para Acompanhamento do Desempenho |  | 1h | 2016-11-30 08:06 A | 2016-11-30 09:06 | 216 | 1h |  |  | 0d | Gerente de Projeto; Diretor do Salão | 2h | 0.48 |
| 218 | 1.4.3 | V Reunião de Entrega de Funcionalidades |  | 2h | 2016-11-30 08:06 A | 2016-11-30 10:06 | 216 | 2h | 2016-09-16 14:59 | 2016-09-16 16:59 | 0d | Gerente de Projeto; Analista de Implantação; Diretor do Salão | 6h | 1.24 |
| 219 | 1.4.4 | Atividades de Monitoramento de Controle |  | 0d | 2016-11-30 10:06 A | 2016-11-30 10:06 | 220SF | 0d | 2016-09-16 16:59 | 2016-09-16 16:59 | 0d | Gerente de Projeto |  |  |
| 220 | 1.4.5 | Marco M7 | milestone | 0d | 2016-11-30 10:06 A | 2016-11-30 10:06 | 218 | 0d | 2016-09-16 16:59 | 2016-09-16 16:59 | 0d |  |  |  |

| ID | WBS | Task | Duration | Start | Finish | Predecessors | Remaining | Baseline 1 start | Baseline 1 finish | Total slack | Resources | Work | Cost |
| --- | --- | --- | --- | --- | --- | --- | --- | --- | --- | --- | --- | --- | --- |
| 221 | 1.4.6 | **Etapa VI** | 4.01d | 2016-11-30 10:06 A | 2016-12-06 10:10 | 220 | 4.01d | 2016-09-16 16:59 | 2016-09-20 10:59 | 0d |  | 57h | 14.01 |
| 222 | 1.4.6.1 | **Prototipação** | 0.62d | 2016-11-30 10:06 A | 2016-11-30 16:06 | 220 | 0.62d | 2016-09-16 16:59 | 2016-09-19 13:59 | 0d |  | 5h | 0.82 |
| 223 | 1.4.6.1.1 | RF 17: Fazer pedido | 1h | 2016-11-30 10:06 A | 2016-11-30 11:06 | 220 | 1h | 2016-09-16 16:59 | 2016-09-19 08:59 | 0d | Designer | 1h | 0.17 |
| 224 | 1.4.6.1.2 | RF 18: Notificar mudança de status do pedido | 1h | 2016-11-30 11:06 A | 2016-11-30 13:06 | 223 | 1h | 2016-09-19 08:59 | 2016-09-19 09:59 | 0d | Designer | 1h | 0.17 |
| 225 | 1.4.6.1.3 | RF 19: Cancelar serviço | 1h | 2016-11-30 13:06 A | 2016-11-30 14:06 | 224 | 1h | 2016-09-19 09:59 | 2016-09-19 10:59 | 0d | Designer | 1h | 0.17 |
| 226 | 1.4.6.1.4 | RF 21: Editar Serviço | 1h | 2016-11-30 14:06 A | 2016-11-30 15:06 | 225 | 1h | 2016-09-19 10:59 | 2016-09-19 11:59 | 0d | Designer | 1h | 0.17 |
| 227 | 1.4.6.1.5 | RF 23: Cancelar Pedido | 1h | 2016-11-30 15:06 A | 2016-11-30 16:06 | 226 | 1h | 2016-09-19 11:59 | 2016-09-19 13:59 | 0d | Designer | 1h | 0.17 |
| 228 | 1.4.6.2 | **Implementação** | 1.01d | 2016-11-30 16:06 A | 2016-12-01 16:11 | 227 | 1.01d | 2016-09-19 08:59 | 2016-09-19 16:59 | 0d |  | 15h | 4.5 |
| 229 | 1.4.6.2.1 | RF 17: Fazer pedido | 3h | 2016-11-30 16:06 A | 2016-12-01 10:06 | 223 | 3h | 2016-09-19 08:59 | 2016-09-19 11:59 | 0d | Desenvolvedor 1 | 3h | 0.9 |
| 230 | 1.4.6.2.2 | RF 18: Notificar mudança de status do pedido | 3h | 2016-11-30 16:06 A | 2016-12-01 10:06 | 224 | 3h | 2016-09-19 09:59 | 2016-09-19 13:59 | 0d | Desenvolvedor 2 | 3h | 0.9 |
| 231 | 1.4.6.2.3 | RF 19: Cancelar serviço | 3h | 2016-11-30 16:06 A | 2016-12-01 10:06 | 225 | 3h | 2016-09-19 10:59 | 2016-09-19 14:59 | 0d | Desenvolvedor 2 | 3h | 0.9 |
| 232 | 1.4.6.2.4 | RF 21: Editar Serviço | 3h | 2016-11-30 16:06 A | 2016-12-01 10:06 | 226 | 3h | 2016-09-19 11:59 | 2016-09-19 15:59 | 0d | Desenvolvedor 1 | 3h | 0.9 |
| 233 | 1.4.6.2.5 | RF 23: Cancelar Pedido | 3h | 2016-12-01 13:11 A | 2016-12-01 16:11 | 227 | 3h | 2016-09-19 13:59 | 2016-09-19 16:59 | 0d | Desenvolvedor 1 | 3h | 0.9 |
| 234 | 1.4.6.3 | **Teste** | 0.12d | 2016-12-01 16:11 A | 2016-12-02 08:11 | 233 | 0.12d | 2016-09-19 11:59 | 2016-09-20 08:59 | 0d |  | 10h | 1.62 |
| 235 | 1.4.6.3.1 | RF 17: Fazer pedido | 1h | 2016-12-01 16:11 A | 2016-12-02 08:11 | 229 | 1h | 2016-09-19 11:59 | 2016-09-19 13:59 | 0d | Analista de Testes; Testador | 2h | 0.33 |
| 236 | 1.4.6.3.2 | RF 18: Notificar mudança de status do pedido | 1h | 2016-12-01 16:11 A | 2016-12-02 08:11 | 230 | 1h | 2016-09-19 13:59 | 2016-09-19 14:59 | 0d | Analista de Testes; Testador | 2h | 0.33 |
| 237 | 1.4.6.3.3 | RF 19: Cancelar serviço | 1h | 2016-12-01 16:11 A | 2016-12-02 08:11 | 231 | 1h | 2016-09-19 14:59 | 2016-09-19 15:59 | 0d | Analista de Testes; Testador | 2h | 0.33 |
| 238 | 1.4.6.3.4 | RF 21: Editar Serviço | 1h | 2016-12-01 16:11 A | 2016-12-02 08:11 | 232 | 1h | 2016-09-19 15:59 | 2016-09-19 16:59 | 0d | Analista de Testes; Testador | 2h | 0.33 |
| 239 | 1.4.6.3.5 | RF 23: Cancelar Pedido | 1h | 2016-12-01 16:11 A | 2016-12-02 08:11 | 233 | 1h | 2016-09-19 16:59 | 2016-09-20 08:59 | 0d | Analista de Testes; Testador | 2h | 0.33 |
| 240 | 1.4.6.4 | **Validação** | 1d | 2016-12-02 08:11 A | 2016-12-05 08:11 | 239 | 1d | 2016-09-19 13:59 | 2016-09-20 09:59 | 0d |  | 15h | 3.75 |
| 241 | 1.4.6.4.1 | RF 17: Fazer pedido | 1h | 2016-12-02 08:11 A | 2016-12-02 09:11 | 235 | 1h | 2016-09-19 13:59 | 2016-09-19 14:59 | 0d | Arquiteto de Sistema; Analista de Testes; Testador | 3h | 0.75 |
| 242 | 1.4.6.4.2 | RF 18: Notificar mudança de status do pedido | 1h | 2016-12-02 08:11 A | 2016-12-02 09:11 | 236 | 1h | 2016-09-19 14:59 | 2016-09-19 15:59 | 0d | Arquiteto de Sistema; Analista de Testes; Testador | 3h | 0.75 |
| 243 | 1.4.6.4.3 | RF 19: Cancelar serviço | 1h | 2016-12-02 08:11 A | 2016-12-02 09:11 | 237 | 1h | 2016-09-19 15:59 | 2016-09-19 16:59 | 0d | Arquiteto de Sistema; Analista de Testes; Testador | 3h | 0.75 |
| 244 | 1.4.6.4.4 | RF 21: Editar Serviços | 1h | 2016-12-02 14:59 A | 2016-12-02 15:59 | 238 | 1h | 2016-09-19 16:59 | 2016-09-20 08:59 | 0d | Arquiteto de Sistema; Analista de Testes; Testador | 3h | 0.75 |
| 245 | 1.4.6.4.5 | RF 23: Cancelar Pedido | 1h | 2016-12-02 16:11 A | 2016-12-05 08:11 | 239 | 1h | 2016-09-20 08:59 | 2016-09-20 09:59 | 0d | Arquiteto de Sistema; Analista de Testes; Testador | 3h | 0.75 |

| ID | WBS | Task | Type | Duration | Start | Finish | Predecessors | Remaining | Baseline 1 start | Baseline 1 finish | Total slack | Resources | Work | Cost |
| --- | --- | --- | --- | --- | --- | --- | --- | --- | --- | --- | --- | --- | --- | --- |
| 246 | 1.4.6.5 | **Implantação** |  | 1.25d | 2016-12-05 08:11 A | 2016-12-06 10:10 | 245 | 1.25d | 2016-09-19 14:59 | 2016-09-20 10:59 | 0d |  | 12h | 3.31 |
| 247 | 1.4.6.5.1 | RF 17: Fazer pedido |  | 1h | 2016-12-05 08:11 A | 2016-12-05 09:11 | 241 | 1h | 2016-09-19 14:59 | 2016-09-19 15:59 | 0d | Arquiteto de Sistema; Analista de Implantação | 2h | 0.56 |
| 248 | 1.4.6.5.2 | RF 18: Notificar mudança de status do pedido |  | 1h | 2016-12-05 08:11 A | 2016-12-05 09:11 | 242 | 1h | 2016-09-19 15:59 | 2016-09-19 16:59 | 0d | Arquiteto de Sistema; Analista de Implantação | 2h | 0.56 |
| 249 | 1.4.6.5.3 | RF 19: Cancelar serviço |  | 1h | 2016-12-05 08:11 A | 2016-12-05 09:11 | 243 | 1h | 2016-09-19 16:59 | 2016-09-20 08:59 | 0d | Arquiteto de Sistema; Analista de Implantação | 2h | 0.56 |
| 250 | 1.4.6.5.4 | RF 21: Editar Serviços |  | 1h | 2016-12-05 16:10 A | 2016-12-06 08:10 | 244 | 1h | 2016-09-20 08:59 | 2016-09-20 09:59 | 0d | Arquiteto de Sistema; Analista de Implantação | 2h | 0.56 |
| 251 | 1.4.6.5.5 | RF 23: Cancelar Pedido |  | 1h | 2016-12-06 08:10 A | 2016-12-06 09:10 | 245 | 1h | 2016-09-20 09:59 | 2016-09-20 10:59 | 0d | Arquiteto de Sistema; Analista de Implantação | 2h | 0.56 |
| 252 | 1.4.6.5.6 | Reunião para Acompanhamento do Desempenho |  | 1h | 2016-12-06 09:10 A | 2016-12-06 10:10 | 251 | 1h |  |  | 0d | Gerente de Projeto; Diretor do Salão | 2h | 0.48 |
| 253 | 1.4.7 | VI Reunião de Entrega de Funcionalidades |  | 2h | 2016-12-06 09:10 A | 2016-12-06 11:10 | 251 | 2h | 2016-09-20 10:59 | 2016-09-20 13:59 | 0d | Analista de Implantação; Diretor do Salão | 4h | 0.28 |
| 254 | 1.4.8 | Marco M8 | milestone | 0d | 2016-12-06 11:10 A | 2016-12-06 11:10 | 253 | 0d | 2016-09-20 13:59 | 2016-09-20 13:59 | 0d |  |  |  |
| 255 | 1.4.9 | **Etapa VII** |  | 1.38d | 2016-12-06 11:10 A | 2016-12-07 15:10 | 254 | 1.38d | 2016-09-20 13:59 | 2016-09-21 15:59 | 0d |  | 43h | 10.55 |
| 256 | 1.4.9.1 | **Prototipação** |  | 0.5d | 2016-12-06 11:10 A | 2016-12-06 16:10 | 254 | 0.5d | 2016-09-20 13:59 | 2016-09-21 08:59 | 0d |  | 4h | 0.66 |
| 257 | 1.4.9.1.1 | RF 22: Alterar Pedido |  | 1h | 2016-12-06 11:10 A | 2016-12-06 13:10 | 254 | 1h | 2016-09-20 13:59 | 2016-09-20 14:59 | 0d | Designer | 1h | 0.17 |
| 258 | 1.4.9.1.2 | RF 24: Consultar Pedido |  | 1h | 2016-12-06 13:10 A | 2016-12-06 14:10 | 257 | 1h | 2016-09-20 14:59 | 2016-09-20 15:59 | 0d | Designer | 1h | 0.17 |
| 259 | 1.4.9.1.3 | RF 25: Avaliar Pedido |  | 1h | 2016-12-06 14:10 A | 2016-12-06 15:10 | 258 | 1h | 2016-09-20 15:59 | 2016-09-20 16:59 | 0d | Designer | 1h | 0.17 |
| 260 | 1.4.9.1.4 | RF 26: Visualizar Informações do Salão |  | 1h | 2016-12-06 15:10 A | 2016-12-06 16:10 | 259 | 1h | 2016-09-20 16:59 | 2016-09-21 08:59 | 0d | Designer | 1h | 0.17 |
| 261 | 1.4.9.2 | **Implementação** |  | 0.38d | 2016-12-06 16:10 A | 2016-12-07 10:10 | 260 | 0.38d | 2016-09-20 14:59 | 2016-09-21 11:59 | 0d |  | 12h | 3.6 |
| 262 | 1.4.9.2.1 | RF 22: Alterar Pedido |  | 3h | 2016-12-06 16:10 A | 2016-12-07 10:10 | 257 | 3h | 2016-09-20 14:59 | 2016-09-21 08:59 | 0d | Desenvolvedor 2 | 3h | 0.9 |
| 263 | 1.4.9.2.2 | RF 24: Consultar Pedido |  | 3h | 2016-12-06 16:10 A | 2016-12-07 10:10 | 258 | 3h | 2016-09-20 15:59 | 2016-09-21 09:59 | 0d | Desenvolvedor 2 | 3h | 0.9 |
| 264 | 1.4.9.2.3 | RF 25: Avaliar Pedido |  | 3h | 2016-12-06 16:10 A | 2016-12-07 10:10 | 259 | 3h | 2016-09-20 16:59 | 2016-09-21 10:59 | 0d | Desenvolvedor 1 | 3h | 0.9 |
| 265 | 1.4.9.2.4 | RF 26: Visualizar Informações do Salão |  | 3h | 2016-12-06 16:10 A | 2016-12-07 10:10 | 260 | 3h | 2016-09-21 08:59 | 2016-09-21 11:59 | 0d | Desenvolvedor 1 | 3h | 0.9 |
| 266 | 1.4.9.3 | **Teste** |  | 0.12d | 2016-12-07 10:10 A | 2016-12-07 11:10 | 265 | 0.12d | 2016-09-21 08:59 | 2016-09-21 13:59 | 0d |  | 8h | 1.3 |
| 267 | 1.4.9.3.1 | RF 22: Alterar Pedido |  | 1h | 2016-12-07 10:10 A | 2016-12-07 11:10 | 262 | 1h | 2016-09-21 08:59 | 2016-09-21 09:59 | 0d | Analista de Testes; Testador | 2h | 0.33 |
| 268 | 1.4.9.3.2 | RF 24: Consultar Pedido |  | 1h | 2016-12-07 10:10 A | 2016-12-07 11:10 | 263 | 1h | 2016-09-21 09:59 | 2016-09-21 10:59 | 0d | Analista de Testes; Testador | 2h | 0.33 |
| 269 | 1.4.9.3.3 | RF 25: Avaliar Pedido |  | 1h | 2016-12-07 10:10 A | 2016-12-07 11:10 | 264 | 1h | 2016-09-21 10:59 | 2016-09-21 11:59 | 0d | Analista de Testes; Testador | 2h | 0.33 |
| 270 | 1.4.9.3.4 | RF 26: Visualizar Informações do Salão |  | 1h | 2016-12-07 10:10 A | 2016-12-07 11:10 | 265 | 1h | 2016-09-21 11:59 | 2016-09-21 13:59 | 0d | Analista de Testes; Testador | 2h | 0.33 |

| ID | WBS | Task | Type | Duration | Start | Finish | Predecessors | Remaining | Baseline 1 start | Baseline 1 finish | Total slack | Constraint | Resources | Work | Cost |
| --- | --- | --- | --- | --- | --- | --- | --- | --- | --- | --- | --- | --- | --- | --- | --- |
| 271 | 1.4.9.4 | **Validação** |  | 0.12d | 2016-12-07 11:10 A | 2016-12-07 13:10 | 270 | 0.12d | 2016-09-21 09:59 | 2016-09-21 14:59 | 0d |  |  | 9h | 2.25 |
| 272 | 1.4.9.4.1 | RF 22: Alterar Pedido |  | 0.67h | 2016-12-07 11:10 A | 2016-12-07 11:50 | 267 | 0.67h | 2016-09-21 09:59 | 2016-09-21 10:59 | 0d |  | Analista de Testes; Testador; Arquiteto de Sistema | 2h | 0.5 |
| 273 | 1.4.9.4.2 | RF 24: Consultar Pedido |  | 0.67h | 2016-12-07 11:10 A | 2016-12-07 11:50 | 268 | 0.67h | 2016-09-21 10:59 | 2016-09-21 11:59 | 0d |  | Analista de Testes; Testador; Arquiteto de Sistema | 2h | 0.5 |
| 274 | 1.4.9.4.3 | RF 25: Avaliar Pedido |  | 0.67h | 2016-12-07 11:10 A | 2016-12-07 11:50 | 269 | 0.67h | 2016-09-21 11:59 | 2016-09-21 13:59 | 0d |  | Analista de Testes; Testador; Arquiteto de Sistema | 2h | 0.5 |
| 275 | 1.4.9.4.4 | RF 26: Visualizar Informações do Salão |  | 1h | 2016-12-07 11:10 A | 2016-12-07 13:10 | 270 | 1h | 2016-09-21 13:59 | 2016-09-21 14:59 | 0d |  | Arquiteto de Sistema; Analista de Testes; Testador | 3h | 0.75 |
| 276 | 1.4.9.5 | **Implantação** |  | 0.25d | 2016-12-07 13:10 A | 2016-12-07 15:10 | 275 | 0.25d | 2016-09-21 10:59 | 2016-09-21 15:59 | 0d |  |  | 10h | 2.74 |
| 277 | 1.4.9.5.1 | RF 22: Alterar Pedido |  | 1h | 2016-12-07 13:10 A | 2016-12-07 14:10 | 272 | 1h | 2016-09-21 10:59 | 2016-09-21 11:59 | 0d |  | Arquiteto de Sistema; Analista de Implantação | 2h | 0.56 |
| 278 | 1.4.9.5.2 | RF 24: Consultar Pedido |  | 1h | 2016-12-07 13:10 A | 2016-12-07 14:10 | 273 | 1h | 2016-09-21 11:59 | 2016-09-21 13:59 | 0d |  | Arquiteto de Sistema; Analista de Implantação | 2h | 0.56 |
| 279 | 1.4.9.5.3 | RF 25: Avaliar Pedido |  | 1h | 2016-12-07 13:10 A | 2016-12-07 14:10 | 274 | 1h | 2016-09-21 13:59 | 2016-09-21 14:59 | 0d |  | Arquiteto de Sistema; Analista de Implantação | 2h | 0.56 |
| 280 | 1.4.9.5.4 | RF 26: Visualizar Informações do Salão |  | 1h | 2016-12-07 13:10 A | 2016-12-07 14:10 | 275 | 1h | 2016-09-21 14:59 | 2016-09-21 15:59 | 0d |  | Arquiteto de Sistema; Analista de Implantação | 2h | 0.56 |
| 281 | 1.4.9.5.5 | Reunião para Acompanhamento do Desempenho |  | 1h | 2016-12-07 14:10 A | 2016-12-07 15:10 | 280 | 1h |  |  | 0d |  | Gerente de Projeto; Diretor do Salão | 2h | 0.48 |
| 282 | 1.4.10 | VII Reunião de Entrega de Funcionalidades |  | 2h | 2016-12-07 14:10 A | 2016-12-07 16:10 | 280 | 2h | 2016-09-21 15:59 | 2016-09-22 08:59 | 0d |  | Gerente de Projeto; Analista de Implantação; Diretor do Salão | 6h | 1.24 |
| 283 | 1.4.11 | Reunião de fechamento da fase com equipe de projeto |  | 2h | 2016-12-08 09:01 A | 2016-12-08 11:01 | 282 | 2h | 2016-09-22 08:59 | 2016-09-22 10:59 | 0d |  | Gerente de Projeto; Analista de Implantação; Desenvolvedor 1; Analista de Sistemas 1; Designer; Arquiteto de Sistema; Analista de Testes; Testador | 16h | 4.27 |
| 284 | 1.4.12 | Atividades de Monitoramento e Controle | milestone | 0h | 2016-12-07 13:10 A | 2016-12-07 13:10 | 277SS | 0h | 2016-09-22 08:59 | 2016-09-22 08:59 | 0d |  | Gerente de Projeto |  |  |
| 285 | 1.4.13 | Marco M9 | milestone | 0h | 2016-12-08 11:01 A | 2016-12-08 11:01 | 283 | 0h | 2016-09-22 10:59 | 2016-09-23 10:59 | 0d |  |  |  |  |
| 286 | 1.5 | **Fase Final** |  | 1.62d | 2016-12-08 11:01 A | 2016-12-12 08:00 | 285 | 1.62d | 2016-09-23 10:59 | 2016-09-23 15:59 | 0d |  |  | 26h | 6.85 |
| 287 | 1.5.1 | Disponibilização do Sistema Mobile |  | 1h | 2016-12-08 11:01 A | 2016-12-08 13:01 | 285 | 1h | 2016-09-23 10:59 | 2016-09-23 10:59 | 0d |  | Gerente de Projeto; Desenvolvedor 2 | 2h | 0.78 |
| 288 | 1.5.2 | Relatório Final de Entrega do Projeto |  | 2h | 2016-12-08 13:01 A | 2016-12-08 15:01 | 287 | 2h | 2016-09-23 10:59 | 2016-09-23 13:59 | 0d |  | Desenvolvedor 2 | 2h | 0.6 |
| 289 | 1.5.3 | Reunião de Fechamento do Projeto |  | 2h | 2016-12-08 13:39 A | 2016-12-08 15:39 | 290 | 2h | 2016-09-23 13:59 | 2016-09-23 15:59 | 0d |  | Gerente de Projeto; Desenvolvedor 1; Analista de Sistemas 1; Designer; Arquiteto de Sistema; Analista de Testes; Testador; Analista de Implantação; Diretor do Salão; Desenvolvedor 2; Analista de Sistemas 2 | 22h | 5.47 |
| 290 | 1.5.4 | Atividades de Monitoramento e Controle | milestone | 0h | 2016-12-08 11:01 A | 2016-12-08 11:01 | 287SS | 0h |  |  | 0d |  | Gerente de Projeto |  |  |
| 291 | 1.5.5 | Marco M10 | milestone | 0h | 2016-12-12 08:00 A | 2016-12-12 08:00 | 289 | 0h | 2016-09-23 15:59 | 2016-09-23 15:59 | 0d | start no earlier than 2016-12-12 08:00 |  |  |  |
